# D gantt SAE

Schedule from MS Project, 2019-02-09 to 2021-01-21, costs in $, A marks actual dates.

## Calendars

- Calendario Proyecto SAE: Mon-Wed 09:00-11:00, 14:00-17:00; Thu-Fri 09:00-13:00, 15:00-19:00; Sat-Sun 07:00-09:00, 10:00-13:00, 14:00-17:00. Exceptions (off unless hours are given): 2019-06-30 to 2019-07-12 (Semana de receso), 2019-12-16 to 2020-01-31 (Vacaciones Diciembre).

## Resources

| Resource | Rate | Cost per use |
| --- | --- | --- |
| Impresion | 5000 | 30000 |
| Documentación | 5000 |  |
| Computador | 5000 | 1300000 |
| Balsamiq |  |  |
| Internet |  |  |
| Uriel Astaiza | 4000 |  |
| Alfredo Silva | 4000 |  |
| Brayan Moscoso | 4000 |  |
| Juan Gaviria | 4000 |  |
| Sublime text |  |  |
| MySQl |  |  |
| Netbeans |  |  |

## Schedule

| ID | WBS | Task | Type | Duration | Start | Finish | Predecessors | Complete | Remaining | Actual start | Actual finish | Total slack | Free slack | Constraint | Resources | Work | Actual work | Cost | Actual cost |
| --- | --- | --- | --- | --- | --- | --- | --- | --- | --- | --- | --- | --- | --- | --- | --- | --- | --- | --- | --- |
| 1 | 1 | **Proyecto SAE** |  | 542.25d | 2019-02-09 A | 2021-01-14 |  | 24% | 414.11d |  |  |  |  |  |  | 12228.3h | 2320.89h | 71,158,280 | 19,774,073.28 |
| 2 | 1.1 | Inicio | manual | 1d | 2019-02-09 | 2019-02-09 |  |  |  |  |  |  |  |  |  |  |  |  |  |
| 3 | 1.1 | **Analisis** |  | 49.01d | 2019-02-15 A | 2019-04-15 |  | 100% |  |  | 2019-04-14 |  |  |  |  | 818.24h | 818.24h | 4,627,960 | 4,627,960 |
| 4 | 1.2.1 | **Levantamiento de información** |  | 7.88d | 2019-02-15 A | 2019-02-24 A |  | 100% |  |  |  |  |  |  |  | 63.04h | 63.04h | 292,160 | 292,160 |
| 5 | 1.2.1.1 | Cuestionario |  | 7.88d | 2019-02-15 A | 2019-02-24 A |  | 100% |  |  |  |  |  | finish no earlier than 2019-02-24 | Uriel Astaiza; Impresion | 63.04h | 63.04h | 292,160 | 292,160 |
| 6 | 1.2.2 | **IEEE830** |  | 25.5d | 2019-03-02 A | 2019-03-31 A |  | 100% |  |  |  |  |  |  |  | 692.16h | 692.16h | 2,778,640 | 2,778,640 |
| 7 | 1.2.2.1 | Requerimientos funcionales y no funcionales |  | 13.75d | 2019-03-02 A | 2019-03-17 A |  | 100% |  |  |  |  |  | finish no earlier than 2019-03-17 | Documentación; Internet [0.1%]; Alfredo Silva; Brayan Moscoso; Juan Gaviria; Uriel Astaiza | 440h | 440h | 1,765,000 | 1,765,000 |
| 8 | 1.2.2.2 | Ficha técnica del proyecto SAE |  | 7.88d | 2019-03-22 A | 2019-03-31 A |  | 100% |  |  |  |  |  | finish no earlier than 2019-03-31 | Documentación; Alfredo Silva; Brayan Moscoso; Juan Gaviria; Uriel Astaiza | 252.16h | 252.16h | 1,013,640 | 1,013,640 |
| 9 | 1.2.3 | BPMN |  | 7.88d | 2019-04-05 A | 2019-04-14 A |  | 100% |  |  |  |  |  | finish no earlier than 2019-04-14 | Computador; Juan Gaviria | 63.04h | 63.04h | 1,557,160 | 1,557,160 |
| 10 | 1.3 | **Diseño** |  | 179.25d | 2019-05-04 A | 2019-12-15 |  | 50% | 89.17d |  |  |  |  |  |  | 2921.76h | 1502.65h | 23,442,040 | 15,146,113.28 |
| 11 | 1.3.1 | Diagrama entidad relación |  | 13.75d | 2019-05-04 A | 2019-05-19 A |  | 100% |  |  |  |  |  | finish no earlier than 2019-05-19 | Computador; Alfredo Silva; Brayan Moscoso | 220h | 220h | 2,185,000 | 2,185,000 |
| 12 | 1.3.2 | Diagrama de clases |  | 19.63d | 2019-05-24 A | 2019-06-16 A | 11 | 100% |  |  |  |  |  | finish no earlier than 2019-06-16 | Computador; Juan Gaviria; Uriel Astaiza | 314.08h | 314.08h | 2,561,320 | 2,561,320 |
| 13 | 1.3.3 | **Diagrama de casos de uso** |  | 6.88d | 2019-06-22 | 2019-07-13 |  | 100% |  | 2019-06-21 | 2019-06-29 |  |  |  |  | 220.16h | 220.16h | 2,185,640 | 2,185,640 |
| 14 | 1.3.3.1 | Diagramas de caso de uso extendido |  | 6.88d | 2019-06-21 A | 2019-06-29 A |  | 100% |  |  |  |  |  | finish no earlier than 2019-06-29 | Computador; Alfredo Silva; Brayan Moscoso; Juan Gaviria; Uriel Astaiza | 220.16h | 220.16h | 2,185,640 | 2,185,640 |
| 15 | 1.3.4 | Diccionario de datos |  | 7.88d | 2019-07-19 A | 2019-07-28 A | 11 | 100% |  |  |  |  |  | finish no earlier than 2019-07-28 | Computador; Documentación; Internet [0.1%]; Uriel Astaiza | 63.04h | 63.04h | 1,562,160 | 1,562,160 |
| 16 | 1.3.5 | Diagrama de distribución |  | 2d | 2019-07-27 A | 2019-07-28 A |  | 100% |  |  |  |  |  | finish no earlier than 2019-07-28 | Computador; Internet [0.1%]; Brayan Moscoso; Juan Gaviria | 32h | 32h | 1,433,000 | 1,433,000 |
| 17 | 1.3.6 | Mockups |  | 7.88d | 2019-08-02 A | 2019-08-11 |  | 60% | 3.15d |  |  | 19.56d | 3.87d | finish no earlier than 2019-08-11 | Computador; Balsamiq [0.1%]; Internet [0.1%]; Alfredo Silva; Brayan Moscoso; Juan Gaviria; Uriel Astaiza | 252.16h | 151.29h | 2,313,640 | 1,908,173.28 |
| 18 | 1.3.7 | Diseño de pagina web |  | 31.38d | 2019-08-16 A | 2019-09-22 | 17 | 50% | 15.69d |  |  | 368.88d |  | finish no earlier than 2019-09-22 | Balsamiq [0.1%]; Computador; Internet [0.1%]; Alfredo Silva; Brayan Moscoso; Juan Gaviria; Uriel Astaiza; Sublime text [0.1%] | 1004.16h | 502.08h | 5,321,640 | 3,310,820 |
| 19 | 1.3.8 | Bases de datos |  | 7.88d | 2019-09-27 | 2019-10-06 |  |  |  |  |  | 314d | 15.62d | finish no earlier than 2019-10-06 | Computador; Documentación; Brayan Moscoso; Uriel Astaiza; MySQl [0.1%] | 126.08h |  | 1,814,320 |  |
| 20 | 1.3.9 | Seguridad base de datos |  | 43.13d | 2019-10-25 | 2019-12-15 | 19 |  |  |  |  | 298.38d |  | finish no earlier than 2019-12-15 | Computador; Internet [0.1%]; Alfredo Silva; Juan Gaviria; Netbeans [0.1%] | 690.08h |  | 4,065,320 |  |
| 21 | 1.4 | **Implementación** |  | 119.5d | 2020-02-01 | 2020-06-21 |  |  |  |  |  | 178.88d |  |  |  | 2764.16h |  | 18,886,640 |  |
| 22 | 1.4.1 | Implementación pagina web |  | 13.75d | 2020-02-01 | 2020-02-16 |  |  |  |  |  | 282.62d | 33.25d | finish no earlier than 2020-02-16 | Computador; Internet [0.1%]; Alfredo Silva; Brayan Moscoso; Juan Gaviria; Uriel Astaiza; Sublime text [0.1%] | 440h |  | 3,065,000 |  |
| 23 | 1.4.2 | Implementación base de datos |  | 25.5d | 2020-02-22 | 2020-03-22 |  |  |  |  |  | 253.25d | 3.88d | finish no earlier than 2020-03-22 | Computador; Internet [0.1%]; Alfredo Silva; Brayan Moscoso; Juan Gaviria; Uriel Astaiza; MySQl [0.1%] | 816h |  | 4,569,000 |  |
| 24 | 1.4.3 | integrar base de datos a pagina web |  | 2d | 2020-03-28 | 2020-03-29 | 22, 23 |  |  |  |  | 249.38d |  | finish no earlier than 2020-03-29 | Computador; Alfredo Silva; Brayan Moscoso; Juan Gaviria; Uriel Astaiza; MySQl [0.1%]; Sublime text [0.1%] | 64h |  | 1,561,000 |  |
| 25 | 1.4.4 | Pruebas |  | 31.38d | 2020-04-03 | 2020-05-10 |  |  |  |  |  | 186.62d | 3.88d | finish no earlier than 2020-05-10 | Computador; Internet [0.1%]; Alfredo Silva; Brayan Moscoso; Juan Gaviria; Uriel Astaiza | 1004.16h |  | 5,321,640 |  |
| 26 | 1.4.5 | Funcionamiento pagina web |  | 13.75d | 2020-05-16 | 2020-05-31 | 25 |  |  |  |  | 182.75d | 3.88d | finish no earlier than 2020-05-31 | Computador; Internet [0.1%]; Alfredo Silva; Brayan Moscoso | 220h |  | 2,185,000 |  |
| 27 | 1.4.6 | Funcionamiento del software |  | 13.75d | 2020-06-06 | 2020-06-21 | 26 |  |  |  |  | 178.88d |  | finish no earlier than 2020-06-21 | Computador; Internet [0.1%]; Juan Gaviria; Uriel Astaiza | 220h |  | 2,185,000 |  |

| ID | WBS | Task | Type | Duration | Start | Finish | Total slack | Constraint | Resources | Work | Cost |
| --- | --- | --- | --- | --- | --- | --- | --- | --- | --- | --- | --- |
| 28 | 1.5 | **Mantenimiento** |  | 178.88d | 2020-06-21 | 2021-01-21 | 0d |  |  | 5724.16h | 24,201,640 |
| 29 | 1.5.1 | Actualización del sistema |  | 178.88d | 2020-06-21 | 2021-01-21 | 0d | finish no earlier than 2021-01-21 | Computador; Internet [0.1%]; Alfredo Silva; Brayan Moscoso; Juan Gaviria; Uriel Astaiza; MySQl [0.1%]; Netbeans [0.1%]; Sublime text [0.1%] | 5724.16h | 24,201,640 |
| 30 | 1.6 | fin | milestone, manual | 0d | 2019-02-09 | 2019-02-09 |  |  |  |  |  |
